# Progetto 2 PM

Schedule from MS Project, 2020-12-22 to 2021-02-22.

## Calendars

- Standard: Mon-Fri 09:00-13:00, 14:00-18:00; Sat-Sun off.

## Resources

| Resource |
| --- |
| gabriele |
| gabriele,giorgio |

## Schedule

| ID | WBS | Task | Type | Duration | Start | Finish | Predecessors | Total slack | Free slack |
| --- | --- | --- | --- | --- | --- | --- | --- | --- | --- |
| 1 | 1 | **OR1:GESTIONE E CONTROLLO** |  | 25d? | 2020-12-22 | 2021-01-25 |  | 20d |  |
| 2 | 1.1 | Business Case e Piano di Progetto |  | 6d | 2020-12-22 | 2020-12-29 |  | 20d | 0d |
| 3 | 1.2 | Documento di Gestione dei Rischi |  | 3d | 2020-12-30 | 2021-01-01 | 2 | 20d | 0d |
| 4 | 1.3 | Documento di Gestione della Qualità |  | 3d | 2021-01-04 | 2021-01-06 | 3 | 20d | 0d |
| 5 | 1.4 | Documento di Gestione della Comunicazione |  | 3d | 2021-01-07 | 2021-01-11 | 4 | 20d | 0d |
| 6 | 1.5 | Documento di Gestione del Timing, del Budget e delle Risorse |  | 3d | 2021-01-12 | 2021-01-14 | 5 | 20d | 0d |
| 7 | 1.6 | Documento di Controllo e Monitoraggio sugli Obiettivi del Progetto |  | 3d | 2021-01-15 | 2021-01-19 | 6 | 20d | 0d |
| 8 | 1.7 | **Documento di Chiusura e Lessons Learned** |  | 4d? | 2021-01-20 | 2021-01-25 | 7 |  |  |
| 9 | 1.7.1 | Documento di Chiusura |  | 2d | 2021-01-20 | 2021-01-21 |  | 20d | 0d |
| 10 | 1.7.2 | Lessons Learned |  | 2d | 2021-01-22 | 2021-01-25 | 9 | 20d |  |
| 11 | 2 | **OR2: Realizzazione Back-end** |  | 7d? | 2020-12-22 | 2020-12-30 |  | 38d |  |
| 12 | 2.1 | **Accesso al dominio** |  | 7d | 2020-12-22 | 2020-12-30 |  | 38d |  |
| 13 | 2.1.1 | Inizializzazione dominio web |  | 7d | 2020-12-22 | 2020-12-30 |  | 38d |  |
| 14 | 2.1.2 | Avvio server sul dominio |  | 1d | 2020-12-22 | 2020-12-22 |  | 44d |  |
| 15 | 2.2 | **Documento di progettazione del database** |  | 0d? | 2020-12-22 | 2020-12-22 |  | 45d |  |
| 16 | 2.2.1 | Progettazione concettuale del database | manual | 1d? | 2020-12-22 | 2020-12-22 |  |  |  |
| 17 | 2.2.2 | Realizzazione diagramma E/R | manual | 1d? | 2020-12-22 | 2020-12-22 |  |  |  |
| 18 | 2.2.3 | Progettazione logica del database | manual | 1d | 2020-12-22 | 2020-12-22 |  |  |  |
| 19 | 2.3 | **Database** |  | 0d? | 2020-12-22 | 2020-12-22 |  | 45d |  |
| 20 | 2.3.1 | Progettazione logica del database | manual | 1d? | 2020-12-22 | 2020-12-22 |  |  |  |
| 21 | 2.3.2 | Progettazione fisica del database | manual | 1d? | 2020-12-22 | 2020-12-22 |  |  |  |
| 22 | 2.3.3 | Implementazione del database | manual | 1d? | 2020-12-22 | 2020-12-22 |  |  |  |
| 23 | 2.3.4 | Progettazione API del Database | manual | 1d? | 2020-12-22 | 2020-12-22 |  |  |  |
| 24 | 2.3.5 | Implementazione API del Database | manual | 1d? | 2020-12-22 | 2020-12-22 |  |  |  |

| ID | WBS | Task | Type | Duration | Start | Finish | Predecessors | Total slack | Constraint |
| --- | --- | --- | --- | --- | --- | --- | --- | --- | --- |
| 25 | 2.4 | **Accesso al CMS** |  | 0d | 2020-12-22 | 2020-12-22 |  | 45d |  |
| 26 | 2.4.1 | Installazione del CMS | manual | 1d | 2020-12-22 | 2020-12-22 |  |  |  |
| 27 | 2.5 | **Autenticazione** |  | 0d? | 2020-12-22 | 2020-12-22 |  | 45d |  |
| 28 | 2.5.1 | Proggettazione del plugin di autenticazione | manual | 1d? | 2020-12-22 | 2020-12-22 |  |  |  |
| 29 | 2.5.2 | Interfaccia di autenticazione | manual | 1d | 2020-12-22 | 2020-12-22 |  |  |  |
| 30 | 2.6 | **Pagamento** |  | 1d? | 2020-12-22 | 2020-12-22 |  | 44d |  |
| 31 | 2.6.1 | Progettazione del plugin di pagamento |  | 1d? | 2020-12-22 | 2020-12-22 |  | 44d |  |
| 32 | 2.6.2 | Interfaccia di pagamento |  | 1d | 2020-12-22 | 2020-12-22 |  | 44d |  |
| 33 | 2.7 | **Gestione Ordini** |  | 0d? | 2020-12-22 | 2020-12-22 |  | 45d |  |
| 34 | 2.7.1 | Progettazione plugin di gestione ordini | manual | 1d? | 2020-12-22 | 2020-12-22 |  |  |  |
| 35 | 2.7.2 | Implementazione plugin di gestione ordini | manual | 1d? | 2020-12-22 | 2020-12-22 |  |  |  |
| 36 | 3 | **OR3: Organizzazione della rete locale** |  | 45d | 2020-12-22 | 2021-02-22 |  | 0d |  |
| 37 | 3.1 | **Report pianificazione dell’infrastruttura di rete** |  | 16d | 2020-12-22 | 2021-01-12 |  |  |  |
| 38 | 3.1.1 | Analisi di mercato sulle soluzioni topologiche moderne |  | 2d | 2020-12-22 | 2020-12-23 |  | 0d |  |
| 39 | 3.1.2 | Individuazione asset informatici e rischi correlati |  | 3d | 2020-12-24 | 2020-12-28 | 38 | 0d |  |
| 40 | 3.1.3 | Pianificazione su software di simulazione di topologie di rete |  | 7d | 2020-12-29 | 2021-01-06 | 39 | 0d |  |
| 41 | 3.1.4 | Stesura di report finale sulla pianificazione della rete |  | 4d | 2021-01-07 | 2021-01-12 | 40 | 0d |  |
| 42 | 3.2 | **Realizzazione dell’infrastruttura di rete** |  | 20d | 2021-01-13 | 2021-02-09 | 41, 37 |  |  |
| 43 | 3.2.1 | Acquisto degli apparati necessari e realizzazione della rete |  | 20d | 2021-01-13 | 2021-02-09 |  | 0d |  |
| 44 | 3.3 | **Rafforzamento della sicurezza informatica** |  | 26d | 2021-01-13 | 2021-02-17 | 37 |  |  |
| 45 | 3.3.1 | Valutazione preventivi con aziende specializzate in penetration testing |  | 10d | 2021-01-13 | 2021-01-26 | 43SS | 10d | start no earlier than 2021-01-13 |
| 46 | 3.3.2 | Svolgimento penetration testing da parte di due aziende scelte |  | 2d | 2021-02-10 | 2021-02-11 | 43, 45 | 0d |  |
| 47 | 3.3.3 | Simulazione Disaster Recovery |  | 2d | 2021-02-12 | 2021-02-15 | 46 | 0d |  |
| 48 | 3.3.4 | Stesura delle linee guida per un piano di Disaster Recovery |  | 2d | 2021-02-16 | 2021-02-17 | 47 | 0d |  |

| ID | WBS | Task | Type | Duration | Start | Finish | Predecessors | Total slack | Free slack |
| --- | --- | --- | --- | --- | --- | --- | --- | --- | --- |
| 49 | 3.4 | **Corso anti social-engineering per i dipendenti** |  | 23d | 2021-01-13 | 2021-02-12 | 37 |  |  |
| 50 | 3.4.1 | Valutazione preventivi con aziende specializzate nell’attività di training per il contrasto al social engineering |  | 7d | 2021-01-13 | 2021-01-21 | 43SS | 19d | 13d |
| 51 | 3.4.2 | Contrattazione ed erogazione del corso anti social-engineering da parte dell'azienda scelta |  | 3d | 2021-02-10 | 2021-02-12 | 50, 43 | 6d |  |
| 52 | 3.5 | Messa in opera dell’infrastruttura di rete |  | 3d | 2021-02-18 | 2021-02-22 | 48, 44 | 0d |  |
| 53 | 4 | **OR4: Realizzazione Fron-end** |  | 5d? | 2020-12-22 | 2020-12-28 |  |  |  |
| 54 | 4.1 | **Mappa di navigazione del sito** |  | 0d? | 2020-12-22 | 2020-12-22 |  | 45d |  |
| 55 | 4.1.1 | Realizzazione mappa di navigazione del sito | manual | 1d? | 2020-12-22 | 2020-12-22 |  |  |  |
| 56 | 4.2 | **Template base** |  | 0d | 2020-12-22 | 2020-12-22 |  | 45d |  |
| 57 | 4.2.1 | Scelta colori e font del sito | manual | 1d | 2020-12-22 | 2020-12-22 |  |  |  |
| 58 | 4.2.2.1 | Progettazione Header | manual | 1d | 2020-12-22 | 2020-12-22 |  |  |  |
| 59 | 4.2.2.2 | Realizzazione Header | manual | 1d | 2020-12-22 | 2020-12-22 |  |  |  |
| 60 | 4.2.3.1 | Progettazione Footer | manual | 1d | 2020-12-22 | 2020-12-22 |  |  |  |
| 61 | 4.2.3.2 | Realizzazione Footer | manual | 1d | 2020-12-22 | 2020-12-22 |  |  |  |
| 62 | 4.3 | **Area personale e autenticazione** |  | 0d? | 2020-12-22 | 2020-12-22 |  | 45d |  |
| 63 | 4.3.1.1 | Progettazione Pagina Profilo | manual | 1d? | 2020-12-22 | 2020-12-22 |  |  |  |
| 64 | 4.3.1.2 | Realizzazione Pagina Profilo | manual | 1d? | 2020-12-22 | 2020-12-22 |  |  |  |
| 65 | 4.3.2.1 | Progettazione Pagina Login | manual | 1d? | 2020-12-22 | 2020-12-22 |  |  |  |
| 66 | 4.3.2.2 | Realizzazione Pagina Login | manual | 1d? | 2020-12-22 | 2020-12-22 |  |  |  |
| 67 | 4.3.3.1 | Progettazione Registrazione | manual | 1d? | 2020-12-22 | 2020-12-22 |  |  |  |
| 68 | 4.3.3.2 | Realizzazione Registrazione | manual | 1d | 2020-12-22 | 2020-12-22 |  |  |  |
| 69 | 4.4 | **Area E-commerce** |  | 0d? | 2020-12-22 | 2020-12-22 |  | 45d |  |
| 70 | 4.4.1.1 | Progettazione area recensioni | manual | 1d? | 2020-12-22 | 2020-12-22 |  |  |  |
| 71 | 4.4.1.2 | Realizzazione area recensioni | manual | 1d? | 2020-12-22 | 2020-12-22 |  |  |  |
| 72 | 4.4.2.1 | Progettazione Carrello | manual | 1d? | 2020-12-22 | 2020-12-22 |  |  |  |
| 73 | 4.4.2.2 | Realizzazione Carrello | manual | 1d? | 2020-12-22 | 2020-12-22 |  |  |  |
| 74 | 4.4.3.1 | Progettazione area acquista | manual | 1d? | 2020-12-22 | 2020-12-22 |  |  |  |
| 75 | 4.4.3.2 | Realizzazione area acquista | manual | 1d? | 2020-12-22 | 2020-12-22 |  |  |  |

| ID | WBS | Task | Type | Duration | Start | Finish | Total slack |
| --- | --- | --- | --- | --- | --- | --- | --- |
| 76 | 4.5 | **Area Prodotto** |  | 0d? | 2020-12-22 | 2020-12-22 | 45d |
| 77 | 4.5.1.1 | Progettazione pagina prodotto | manual | 1d? | 2020-12-22 | 2020-12-22 |  |
| 78 | 4.5.1.2 | Realizzazione pagina prodotto | manual | 1d? | 2020-12-22 | 2020-12-22 |  |
| 79 | 4.5.2.1 | Progettazione Modifica Prodotto | manual | 1d? | 2020-12-22 | 2020-12-22 |  |
| 80 | 4.5.2.2 | Realizzazione Modifica Prodotto | manual | 1d | 2020-12-22 | 2020-12-22 |  |
| 81 | 4.6 | **Area Social** |  | 0d? | 2020-12-22 | 2020-12-22 | 45d |
| 82 | 4.6.1.1 | Progettazione Visualizza profilo utente e designer | manual | 1d? | 2020-12-22 | 2020-12-22 |  |
| 83 | 4.6.1.2 | Realizzazione Visualizza profilo utente e designer | manual | 1d? | 2020-12-22 | 2020-12-22 |  |
| 84 | 4.6.2.1 | Progettazione Area Lavora con noi | manual | 1d? | 2020-12-22 | 2020-12-22 |  |
| 85 | 4.6.2.2 | Realizzazione Area Lavora con noi | manual | 1d? | 2020-12-22 | 2020-12-22 |  |
| 86 | 4.6.3.1 | Progettazione Chat | manual | 1d? | 2020-12-22 | 2020-12-22 |  |
| 87 | 4.6.3.2 | Realizzazione Chat | manual | 1d? | 2020-12-22 | 2020-12-22 |  |
| 88 | 4.7 | **Area Moderatore** |  | 0d? | 2020-12-22 | 2020-12-22 | 45d |
| 89 | 4.7.1.1 | Progettazione Area Candidati Designer | manual | 1d? | 2020-12-22 | 2020-12-22 |  |
| 90 | 4.7.1.2 | Realizzazione Area Candidati Designer | manual | 1d | 2020-12-22 | 2020-12-22 |  |
| 91 | 4.8 | **Area Gestionale** |  | 0d? | 2020-12-22 | 2020-12-22 | 45d |
| 92 | 4.8.1.1 | Progettazione Area Ordini | manual | 1d? | 2020-12-22 | 2020-12-22 |  |
| 93 | 4.8.1.2 | Realizzazione Area Ordini | manual | 1d? | 2020-12-22 | 2020-12-22 |  |
| 94 | 4.8.2.1 | Progettazione Area Gestione Produzione | manual | 1d? | 2020-12-22 | 2020-12-22 |  |
| 95 | 4.8.2.2 | Realizzazione Area Gestione Produzione | manual | 1d | 2020-12-22 | 2020-12-22 |  |
| 96 | 4.9 | **Area Ricerca e Classifica** |  | 0d? | 2020-12-22 | 2020-12-22 | 45d |
| 97 | 4.9.1.1 | Progettazione Area Classifica | manual | 1d | 2020-12-22 | 2020-12-22 |  |
| 98 | 4.9.1.2 | Realizzazione Area Classifica | manual | 1d | 2020-12-22 | 2020-12-22 |  |
| 99 | 4.9.2.1 | Progettazione Area Ricerca Prodotto | manual | 1d | 2020-12-22 | 2020-12-22 |  |
| 100 | 4.9.2.2 | Realizzazione Area Ricerca Prodotto | manual | 1d? | 2020-12-22 | 2020-12-22 |  |
| 102 | 4.10 | prova un cazzzo | manual | 1d? | 2020-12-22 | 2020-12-22 |  |
